Schedule from MS Project, 2018-09-17 to 2019-01-10, 1 hours a day.

## Calendars

- PRD2018-G03-项目日历: Mon off; Tue-Fri 20:00-21:00; Sat-Sun 14:00-16:00, 19:00-21:00. Exceptions (off unless hours are given): 2018-09-22 to 2018-09-24 (中秋节假期), 2018-10-01 to 2018-10-07 (国庆节假期).

## Resources

| Resource |
| --- |
| 沈启航 |
| 骆佳俊 |
| 叶柏成 |
| 徐哲远 |
| 杨以恒 |

## Schedule

| ID | WBS | Task | Type | Duration | Start | Finish | Predecessors | Total slack | Resources | Work |
| --- | --- | --- | --- | --- | --- | --- | --- | --- | --- | --- |
| 1 | 1 | **软件工程系列课程教学辅助网站系统-项目** |  | 177d | 2018-09-17 | 2019-01-10 |  |  |  | 105.5h |
| 2 | 1.1 | **项目启动** |  | 6h | 2018-09-17 | 2018-09-22 |  |  |  | 28h |
| 3 | 1.1.1 | 人员召集 | manual | 2d | 2018-09-17 | 2018-09-18 |  |  | 骆佳俊; 徐哲远; 杨以恒; 叶柏成 | 8h |
| 4 | 1.1.2 | 课题选定 | manual | 1d | 2018-09-19 | 2018-09-19 |  |  | 骆佳俊; 沈启航; 徐哲远; 杨以恒; 叶柏成 | 5h |
| 5 | 1.1.3 | 小组成员组成 | milestone, manual | 0d | 2018-09-19 | 2018-09-19 | 4 |  | 沈启航 |  |
| 6 | 1.1.4 | 资料申请与完善 | manual | 2d | 2018-09-20 | 2018-09-21 |  |  | 骆佳俊; 沈启航; 徐哲远; 杨以恒; 叶柏成 | 10h |
| 7 | 1.1.5 | 项目起订 | manual | 1d | 2018-09-22 | 2018-09-22 |  |  | 骆佳俊; 沈启航; 徐哲远; 杨以恒; 叶柏成 | 5h |
| 8 | 1.2 | **项目计划** |  | 169d | 2018-09-22 | 2019-01-06 |  |  |  | 77.5h |
| 9 | 1.2.1 | **需求过程** |  | 65d | 2018-09-22 | 2018-11-09 |  |  |  | 77.5h |
| 10 | 1.2.1.1 | **需求获取** |  | 34.5d | 2018-09-25 | 2018-10-21 |  | 0d |  | 32.5h |
| 11 | 1.2.1.1.1 | 定义产品愿景和项目范围 | manual | 1h | 2018-09-25 | 2018-09-25 | 7 |  | 骆佳俊; 沈启航; 徐哲远; 杨以恒; 叶柏成 | 5h |
| 12 | 1.2.1.1.2 | 识别用户类型及其特征 | manual | 1h | 2018-09-26 | 2018-09-26 | 11 |  | 骆佳俊; 沈启航; 徐哲远; 杨以恒; 叶柏成 | 5h |
| 13 | 1.2.1.1.3 | 为每类用户选出用户代表 | manual | 1h | 2018-09-27 | 2018-09-27 | 12 |  | 骆佳俊; 沈启航; 徐哲远; 杨以恒; 叶柏成 | 5h |
| 14 | 1.2.1.1.4 | 识别系统事件和反应 | manual | 1h | 2018-09-28 | 2018-09-28 | 13 |  | 骆佳俊; 沈启航; 徐哲远; 杨以恒; 叶柏成 | 5h |
| 15 | 1.2.1.1.5 | 举办需求访谈 | manual | 0.5h | 2018-09-25 | 2018-09-25 | 7 |  | 骆佳俊; 沈启航; 徐哲远; 杨以恒; 叶柏成 | 2.5h |
| 16 | 1.2.1.1.6 | 检查现有系统在需求方面的报告 | manual | 1h | 2018-09-25 | 2018-09-26 | 15 |  | 骆佳俊; 沈启航; 徐哲远; 杨以恒; 叶柏成 | 5h |
| 17 | 1.2.1.1.7 | 重用现有需求 | manual | 1d | 2018-09-26 | 2018-09-27 | 16 |  | 骆佳俊; 沈启航; 徐哲远; 杨以恒; 叶柏成 | 5h |
| 18 | 1.2.1.1.8 | 《需求项目工程计划》 | milestone, manual | 0d | 2018-09-25 | 2018-09-25 | 6 |  | 骆佳俊; 沈启航; 徐哲远; 杨以恒; 叶柏成 |  |
| 19 | 1.2.1.1.9 | 《愿景与范围》文档 | milestone, manual | 0d | 2018-10-21 | 2018-10-21 | 15, 11, 12, 13, 14, 16, 17 |  | 骆佳俊; 沈启航; 徐哲远; 杨以恒; 叶柏成 |  |
| 20 | 1.2.1.2 | **需求分析** |  | 10d? | 2018-10-01 | 2018-10-14 |  | 0d |  | 45h |
| 21 | 1.2.1.2.1 | 分析需求可实现性 | manual | 9h | 2018-10-01 | 2018-10-13 |  |  | 骆佳俊; 沈启航; 徐哲远; 杨以恒; 叶柏成 | 45h |
| 22 | 1.2.1.2.2 | 《可行性分析报告》 | milestone, manual | 0d | 2018-10-14 | 2018-10-14 | 21 |  | 骆佳俊; 沈启航; 徐哲远; 杨以恒; 叶柏成 |  |
| 23 | 1.2.1.2.3 | 创建用户界面以及技术原型 | milestone, manual | 0d? | 2018-10-01 | 2018-10-01 |  |  |  |  |
| 24 | 1.2.1.2.4 | 需求按优先级排序 | milestone, manual | 0d? | 2018-10-01 | 2018-10-01 |  |  |  |  |
| 25 | 1.2.1.2.5 | 建立数据字典 | milestone, manual | 0d? | 2018-10-01 | 2018-10-01 |  |  |  |  |
| 26 | 1.2.1.2.6 | 为需求建模 | milestone, manual | 0d? | 2018-10-01 | 2018-10-01 |  |  |  |  |
| 27 | 1.2.1.2.7 | 分析系统与外部世界之间的联系 | milestone, manual | 0d? | 2018-10-01 | 2018-10-01 |  |  |  |  |
| 28 | 1.2.1.3 | 《项目章程》 | milestone, manual | 0d | 2018-10-21 | 2018-10-21 | 22 |  | 杨以恒 |  |
| 29 | 1.2.1.4 | 《项目总体计划》 | milestone, manual | 0d | 2018-10-21 | 2018-10-21 | 22 |  | 骆佳俊; 沈启航; 徐哲远; 杨以恒; 叶柏成 |  |

| ID | WBS | Task | Type | Duration | Start | Finish | Predecessors | Total slack | Resources |
| --- | --- | --- | --- | --- | --- | --- | --- | --- | --- |
| 30 | 1.2.1.5 | **需求规范说明** |  | 0d? | 2018-09-22 | 2018-09-22 |  | 0d |  |
| 31 | 1.2.1.5.1 | 使用需求文档模板 | milestone, manual | 0d? | 2018-09-22 | 2018-09-22 |  |  |  |
| 32 | 1.2.1.5.2 | 明确需求来源 | milestone, manual | 0d? | 2018-09-22 | 2018-09-22 |  |  |  |
| 33 | 1.2.1.5.3 | 记录业务规则 | milestone, manual | 0d? | 2018-09-22 | 2018-09-22 |  |  |  |
| 34 | 1.2.1.5.4 | 记录非功能需求 | milestone, manual | 0d? | 2018-09-22 | 2018-09-22 |  |  |  |
| 35 | 1.2.1.6 | **需求验证** |  | 0d? | 2018-09-22 | 2018-09-22 |  | 0d |  |
| 36 | 1.2.1.6.1 | 需求评审 | milestone, manual | 0d? | 2018-09-22 | 2018-09-22 |  |  |  |
| 37 | 1.2.1.6.2 | 测试需求 | milestone, manual | 0d? | 2018-09-22 | 2018-09-22 |  |  |  |
| 38 | 1.2.1.6.3 | 定义验收标准 | milestone, manual | 0d? | 2018-09-22 | 2018-09-22 |  |  |  |
| 39 | 1.2.1.7 | 《质量保证计划》 | milestone, manual | 0d | 2018-09-25 | 2018-09-25 | 35 |  | 骆佳俊; 沈启航; 徐哲远; 杨以恒; 叶柏成 |
| 40 | 1.2.1.8 | 《需求项目工程计划》修改及评审 | manual | 1h | 2018-09-22 | 2018-09-22 |  |  |  |
| 41 | 1.2.1.9 | **需求管理** |  | 0d? | 2018-09-22 | 2018-09-22 |  | 0d |  |
| 42 | 1.2.1.9.1 | 建立一个需求变更控制流程 | milestone, manual | 0d? | 2018-09-22 | 2018-09-22 |  |  |  |
| 43 | 1.2.1.9.2 | 对需求变更进行影响分析 | milestone, manual | 0d? | 2018-09-22 | 2018-09-22 |  |  |  |
| 44 | 1.2.1.9.3 | 建立基线并控制需求集合版本 | milestone, manual | 0d? | 2018-09-22 | 2018-09-22 |  |  |  |
| 45 | 1.2.1.9.4 | 维护需求变更的历史记录 | milestone, manual | 0d? | 2018-09-22 | 2018-09-22 |  |  |  |
| 46 | 1.2.1.9.5 | 跟踪每个需求的状态 | milestone, manual | 0d? | 2018-09-22 | 2018-09-22 |  |  |  |
| 47 | 1.2.1.9.6 | 维护一个需求可跟踪矩阵 | milestone, manual | 0d? | 2018-09-22 | 2018-09-22 |  |  |  |
| 48 | 1.2.1.9.7 | 使用需求管理工具 | milestone, manual | 0d? | 2018-09-22 | 2018-09-22 |  |  |  |
| 49 | 1.2.1.10 | **需求阶段收尾** |  | 0d? | 2018-09-22 | 2018-09-22 |  | 0d |  |
| 50 | 1.2.1.10.1 | 汇总文档 | milestone, manual | 0d? | 2018-09-22 | 2018-09-22 |  |  |  |
| 51 | 1.2.2 | 概要设计 | milestone, manual | 0d? | 2018-09-22 | 2018-09-22 |  |  |  |
| 52 | 1.2.3 | 详细设计 | milestone, manual | 0d? | 2018-09-22 | 2018-09-22 |  |  |  |
| 53 | 1.3 | 项目执行 | milestone, manual | 0d? | 2018-09-17 | 2018-09-17 |  |  |  |
| 54 | 1.4 | 项目监控 | milestone, manual | 0d? | 2018-09-17 | 2018-09-17 |  |  |  |
| 55 | 1.5 | 项目收尾 | milestone, manual | 0d? | 2018-09-17 | 2018-09-17 |  |  |  |

| ID | WBS | Task | Type | Duration | Start | Finish | Resources | Work |
| --- | --- | --- | --- | --- | --- | --- | --- | --- |
| 56 | 2 | **小组会议** |  | 176d | 2018-09-17 | 2019-01-10 |  | 30h |
| 57 | 2.1 | 第一次正式会议 | manual | 1h | 2018-09-28 | 2018-09-28 | 骆佳俊; 沈启航; 徐哲远; 杨以恒; 叶柏成 | 5h |
| 58 | 2.2 | 第二次正式会议 | manual | 1h | 2018-10-09 | 2018-10-09 | 骆佳俊; 沈启航; 徐哲远; 杨以恒; 叶柏成 | 5h |
| 59 | 2.3 | 第三次正式会议 | manual | 1h | 2018-10-16 | 2018-10-16 | 骆佳俊; 沈启航; 徐哲远; 杨以恒; 叶柏成 | 5h |
| 60 | 2.4 | 访谈后临时会议 | manual | 1h | 2018-10-21 | 2018-10-21 | 骆佳俊; 沈启航; 徐哲远; 杨以恒; 叶柏成 | 5h |
| 61 | 2.5 | 第四次正式会议 | manual | 1h | 2018-10-23 | 2018-10-23 | 骆佳俊; 沈启航; 徐哲远; 杨以恒; 叶柏成 | 5h |
| 62 | 2.6 | 第五次正式会议 | manual | 1h | 2018-10-30 | 2018-10-30 | 骆佳俊; 沈启航; 徐哲远; 杨以恒; 叶柏成 | 5h |
| 63 | 3 | **课程作业（除项目文档外）** |  | 176d | 2018-09-17 | 2019-01-10 |  | 165h |
| 64 | 3.1 | 翻转课堂UML概述PPT | manual | 11d | 2018-10-10 | 2018-10-14 | 骆佳俊; 沈启航; 徐哲远; 杨以恒; 叶柏成 | 55h |
| 65 | 3.2 | 翻转课堂UML工具PPT | manual | 11d | 2018-10-17 | 2018-10-21 | 骆佳俊; 沈启航; 徐哲远; 杨以恒; 叶柏成 | 55h |
| 66 | 3.3 | 翻转课堂UML的图PPT | manual | 11d | 2018-10-24 | 2018-10-28 | 骆佳俊; 沈启航; 徐哲远; 杨以恒; 叶柏成 | 55h |
